# Horno_electrico_Tecsup_16_semanas

Schedule from MS Project, 2026-08-17 to 2026-12-06, status date 2026-10-09.
Plan R01 ampliado a 16 semanas. Inicio 17/08/2026; cierre 06/12/2026. Se conservan fechas y dependencias S1–S12; S12 es demostración intermedia. Calendario lunes a domingo 09:00–13:00 y 15:00–19:00. Dedicación por asignación 50% (4 h/día), supuesto de planificación. Avances reales no informados: 0% no acredita falta de ejecución. S13 precomisionamiento; S14 ensayos/FAT; S15 comisionamiento/SAT académico/validación; S16 entrega y cierre. Todos los hitos de aceptación están pendientes de ejecución y evidencia. No incluye instalación industrial ni certificación del prototipo.
Plan R01 ampliado a 16 semanas. Inicio 17/08/2026; cierre 06/12/2026. Se conservan fechas y dependencias S1S12; S12 es demostración intermedia. Calendario lunes a domingo 09:0013:00 y 15:0019:00. Dedicación por asignación 50% (4 h/día), supuesto de planificación. Avances reales no informados: 0% no acredita falta de ejecución. S13 precomisionamiento; S14 ensayos/FAT; S15 comisionamiento/SAT académico/validación; S16 entrega y cierre. Todos los hitos de aceptación están pendientes de ejecución y evidencia. No incluye instalación industrial ni certificación del prototipo.

## Calendars

- TECSUP - Lunes a domingo (8 h/día): Mon-Sun 09:00-13:00, 15:00-19:00.

## Resources

| Resource | Group | Notes |
| --- | --- | --- |
| SR | Document Control | Sandro Romero Document Control. Disponibilidad de calendario 8 h/día; asignación prevista 50% (4 h/día) por actividad. |
| GM | Systems / Requirements | Gonzalo Mamani Systems / Requirements. Disponibilidad de calendario 8 h/día; asignación prevista 50% (4 h/día) por actividad. |
| LC | Automation Engineering | Luis Chura Automation Engineering. Disponibilidad de calendario 8 h/día; asignación prevista 50% (4 h/día) por actividad. |
| RP | Integration / Review | Rafhael Pacco Integration / Review. Disponibilidad de calendario 8 h/día; asignación prevista 50% (4 h/día) por actividad. |

## Schedule

| ID | WBS | Task | Type | Duration | Start | Finish | Predecessors | Total slack | Resources | Work |
| --- | --- | --- | --- | --- | --- | --- | --- | --- | --- | --- |
| 1 | 1 | **I. DEFINIR — Semanas 1 a 3** |  | 21d | 2026-08-17 | 2026-09-06 |  | 0d |  | 160h |
| 2 | 1.1 | **SEMANA 01 — Inicio, equipo y necesidad** |  | 7d | 2026-08-17 | 2026-08-23 |  | 0d |  | 48h |
| 3 | 1.1.1 | Conformar equipo, asignar roles y acordar alcance |  | 1d | 2026-08-17 | 2026-08-17 |  | 0d | SR [50%]; GM [50%]; LC [50%]; RP [50%] | 16h |
| 4 | 1.1.2 | Crear carpetas, registro DOC-01 y control de revisiones |  | 2d | 2026-08-18 | 2026-08-19 | 3 | 3d | SR [50%] | 8h |
| 5 | 1.1.3 | Levantar necesidad de la empresa y proceso manual actual |  | 3d | 2026-08-18 | 2026-08-20 | 3 | 0d | GM [50%] | 12h |
| 6 | 1.1.4 | Redactar Problem Statement y delimitar el prototipo |  | 2d | 2026-08-21 | 2026-08-22 | 5 | 0d | GM [50%] | 8h |
| 7 | 1.1.5 | Revisar problema, alcance y planificación inicial |  | 1d | 2026-08-23 | 2026-08-23 | 4, 6 | 0d | RP [50%] | 4h |
| 8 | 1.1.6 | HITO S01 — Entregables semanales revisados | milestone | 0d | 2026-08-23 | 2026-08-23 | 7 | 0d | RP [50%] |  |
| 9 | 1.2 | **SEMANA 02 — Investigación y benchmarking** |  | 7d | 2026-08-24 | 2026-08-30 |  | 0d |  | 76h |
| 10 | 1.2.1 | Revisar fichas del barniz y condiciones de curado |  | 3d | 2026-08-24 | 2026-08-26 | 8 | 0d | GM [50%] | 12h |
| 11 | 1.2.2 | Investigar hornos, calefacción eléctrica y alternativas de control |  | 3d | 2026-08-24 | 2026-08-26 | 8 | 0d | LC [50%] | 12h |
| 12 | 1.2.3 | Comparar alternativas técnicas y restricciones del prototipo |  | 3d | 2026-08-27 | 2026-08-29 | 10, 11 | 0d | GM [50%]; LC [50%] | 24h |
| 13 | 1.2.4 | Registrar fuentes y consolidar antecedentes |  | 6d | 2026-08-24 | 2026-08-29 | 8 | 0d | SR [50%] | 24h |
| 14 | 1.2.5 | Revisar benchmarking y requisitos del proceso |  | 1d | 2026-08-30 | 2026-08-30 | 12, 13 | 0d | RP [50%] | 4h |
| 15 | 1.2.6 | HITO S02 — Entregables semanales revisados | milestone | 0d | 2026-08-30 | 2026-08-30 | 14 | 0d | RP [50%] |  |
| 16 | 1.3 | **SEMANA 03 — Funciones y concepto de solución** |  | 7d | 2026-08-31 | 2026-09-06 |  | 0d |  | 36h |
| 17 | 1.3.1 | Definir FUN-01: funciones del horno eléctrico |  | 2d | 2026-08-31 | 2026-09-01 | 15 | 0d | GM [50%] | 8h |
| 18 | 1.3.2 | Definir CES-01: criterios de éxito verificables |  | 2d | 2026-09-02 | 2026-09-03 | 17 | 1d | GM [50%] | 8h |
| 19 | 1.3.3 | Elaborar concepto, caja negra y flujos de energía e información |  | 3d | 2026-09-02 | 2026-09-04 | 17 | 0d | LC [50%] | 12h |
| 20 | 1.3.4 | Consolidar entregables y trazabilidad inicial |  | 1d | 2026-09-05 | 2026-09-05 | 18, 19 | 0d | SR [50%] | 4h |
| 21 | 1.3.5 | Revisar y aprobar concepto de solución |  | 1d | 2026-09-06 | 2026-09-06 | 20 | 0d | RP [50%] | 4h |
| 22 | 1.3.6 | HITO S03 — Entregables semanales revisados | milestone | 0d | 2026-09-06 | 2026-09-06 | 21 | 0d | RP [50%] |  |
| 23 | 2 | **II. DISEÑAR — Semanas 4 a 6** |  | 21d | 2026-09-07 | 2026-09-27 |  | 0d |  | 136h |
| 24 | 2.1 | **SEMANA 04 — SRS y arquitectura del sistema** |  | 7d | 2026-09-07 | 2026-09-13 |  | 0d |  | 44h |
| 25 | 2.1.1 | Desarrollar SRS: requisitos funcionales, control y desempeño |  | 3d | 2026-09-07 | 2026-09-09 | 22 | 0d | GM [50%] | 12h |
| 26 | 2.1.2 | Definir interfaces, requisitos mecánicos y seguridad |  | 2d | 2026-09-10 | 2026-09-11 | 25 | 0d | GM [50%]; LC [50%] | 16h |
| 27 | 2.1.3 | Elaborar ARC-01 y ARC-02: arquitectura conceptual y tecnológica |  | 2d | 2026-09-10 | 2026-09-11 | 25 | 0d | LC [50%] | 8h |
| 28 | 2.1.4 | Verificar trazabilidad funciones–requisitos–arquitectura |  | 1d | 2026-09-12 | 2026-09-12 | 26, 27 | 0d | RP [50%] | 4h |
| 29 | 2.1.5 | Publicar revisión SRS y arquitectura |  | 1d | 2026-09-13 | 2026-09-13 | 28 | 0d | SR [50%] | 4h |
| 30 | 2.1.6 | HITO S04 — Entregables semanales revisados | milestone | 0d | 2026-09-13 | 2026-09-13 | 29 | 0d | RP [50%] |  |

Notes:
- 3: Responsable principal: Sandro Romero (Document Control). Entregable: Conformar equipo, asignar roles y acordar alcance. Duración y dedicación estimadas; validar con el equipo.
- 4: Responsable principal: Sandro Romero (Document Control). Entregable: Crear carpetas, registro DOC-01 y control de revisiones. Duración y dedicación estimadas; validar con el equipo.
- 5: Responsable principal: Gonzalo Mamani (Systems / Requirements). Entregable: Levantar necesidad de la empresa y proceso manual actual. Duración y dedicación estimadas; validar con el equipo.
- 6: Responsable principal: Gonzalo Mamani (Systems / Requirements). Entregable: Redactar Problem Statement y delimitar el prototipo. Duración y dedicación estimadas; validar con el equipo.
- 7: Responsable principal: Rafhael Pacco (Integration / Review). Entregable: Revisar problema, alcance y planificación inicial. Duración y dedicación estimadas; validar con el equipo.
- 8: Hito de planificación; aprobación real pendiente de registrar.
- 10: Responsable principal: Gonzalo Mamani (Systems / Requirements). Entregable: Revisar fichas del barniz y condiciones de curado. Duración y dedicación estimadas; validar con el equipo.
- 11: Responsable principal: Luis Chura (Automation Engineering). Entregable: Investigar hornos, calefacción eléctrica y alternativas de control. Duración y dedicación estimadas; validar con el equipo.
- 12: Responsable principal: Gonzalo Mamani (Systems / Requirements). Entregable: Comparar alternativas técnicas y restricciones del prototipo. Duración y dedicación estimadas; validar con el equipo.
- 13: Responsable principal: Sandro Romero (Document Control). Entregable: Registrar fuentes y consolidar antecedentes. Duración y dedicación estimadas; validar con el equipo.
- 14: Responsable principal: Rafhael Pacco (Integration / Review). Entregable: Revisar benchmarking y requisitos del proceso. Duración y dedicación estimadas; validar con el equipo.
- 15: Hito de planificación; aprobación real pendiente de registrar.
- 17: Responsable principal: Gonzalo Mamani (Systems / Requirements). Entregable: Definir FUN-01: funciones del horno eléctrico. Duración y dedicación estimadas; validar con el equipo.
- 18: Responsable principal: Gonzalo Mamani (Systems / Requirements). Entregable: Definir CES-01: criterios de éxito verificables. Duración y dedicación estimadas; validar con el equipo.
- 19: Responsable principal: Luis Chura (Automation Engineering). Entregable: Elaborar concepto, caja negra y flujos de energía e información. Duración y dedicación estimadas; validar con el equipo.
- 20: Responsable principal: Sandro Romero (Document Control). Entregable: Consolidar entregables y trazabilidad inicial. Duración y dedicación estimadas; validar con el equipo.
- 21: Responsable principal: Rafhael Pacco (Integration / Review). Entregable: Revisar y aprobar concepto de solución. Duración y dedicación estimadas; validar con el equipo.
- 22: Hito de planificación; aprobación real pendiente de registrar.
- 25: Responsable principal: Gonzalo Mamani (Systems / Requirements). Entregable: Desarrollar SRS: requisitos funcionales, control y desempeño. Duración y dedicación estimadas; validar con el equipo.
- 26: Responsable principal: Gonzalo Mamani (Systems / Requirements). Entregable: Definir interfaces, requisitos mecánicos y seguridad. Duración y dedicación estimadas; validar con el equipo.
- 27: Responsable principal: Luis Chura (Automation Engineering). Entregable: Elaborar ARC-01 y ARC-02: arquitectura conceptual y tecnológica. Duración y dedicación estimadas; validar con el equipo.
- 28: Responsable principal: Rafhael Pacco (Integration / Review). Entregable: Verificar trazabilidad funcionesrequisitosarquitectura. Duración y dedicación estimadas; validar con el equipo.
- 29: Responsable principal: Sandro Romero (Document Control). Entregable: Publicar revisión SRS y arquitectura. Duración y dedicación estimadas; validar con el equipo.
- 30: Hito de planificación; aprobación real pendiente de registrar.

| ID | WBS | Task | Type | Duration | Start | Finish | Predecessors | Total slack | Resources | Work |
| --- | --- | --- | --- | --- | --- | --- | --- | --- | --- | --- |
| 31 | 2.2 | **SEMANA 05 — Filosofía de control y diagramas** |  | 7d | 2026-09-14 | 2026-09-20 |  | 0d |  | 52h |
| 32 | 2.2.1 | Definir estados, permisos, alarmas y filosofía de control |  | 2d | 2026-09-14 | 2026-09-15 | 30 | 0d | GM [50%]; LC [50%] | 16h |
| 33 | 2.2.2 | Elaborar PFD actual y PFD del horno eléctrico requerido |  | 2d | 2026-09-16 | 2026-09-17 | 32 | 0d | LC [50%] | 8h |
| 34 | 2.2.3 | Elaborar P&ID y hoja cero de simbología |  | 2d | 2026-09-18 | 2026-09-19 | 33 | 0d | LC [50%] | 8h |
| 35 | 2.2.4 | Revisar interfaces y seguridad independiente del PID |  | 1d | 2026-09-20 | 2026-09-20 | 34 | 0d | RP [50%] | 4h |
| 36 | 2.2.5 | Consolidar memoria del diseño y referencias |  | 4d | 2026-09-16 | 2026-09-19 | 32 | 1d | SR [50%] | 16h |
| 37 | 2.2.6 | HITO S05 — Entregables semanales revisados | milestone | 0d | 2026-09-20 | 2026-09-20 | 35, 36 | 0d | RP [50%] |  |
| 38 | 2.3 | **SEMANA 06 — Selección tecnológica y paquete de diseño** |  | 7d | 2026-09-21 | 2026-09-27 |  | 0d |  | 40h |
| 39 | 2.3.1 | Dimensionar preliminarmente calefacción, aislamiento y ventiladores |  | 2d | 2026-09-21 | 2026-09-22 | 37 | 0d | LC [50%] | 8h |
| 40 | 2.3.2 | Seleccionar PLC, HMI, PT100, transmisor y módulo AI 4–20 mA |  | 2d | 2026-09-23 | 2026-09-24 | 39 | 0d | LC [50%] | 8h |
| 41 | 2.3.3 | Seleccionar SSR, disipador y protecciones de calefacción |  | 1d | 2026-09-25 | 2026-09-25 | 40 | 0d | LC [50%] | 4h |
| 42 | 2.3.4 | Consolidar BOM, proveedores, presupuesto e IGV |  | 1d | 2026-09-26 | 2026-09-26 | 41 | 0d | SR [50%]; LC [50%] | 8h |
| 43 | 2.3.5 | Completar matriz de trazabilidad del diseño |  | 2d | 2026-09-25 | 2026-09-26 | 40 | 0d | GM [50%] | 8h |
| 44 | 2.3.6 | Revisar viabilidad y liberar Project Design Package v1.0 |  | 1d | 2026-09-27 | 2026-09-27 | 42, 43 | 0d | RP [50%] | 4h |
| 45 | 2.3.7 | HITO S06 — Entregables semanales revisados | milestone | 0d | 2026-09-27 | 2026-09-27 | 44 | 0d | RP [50%] |  |
| 46 | 3 | **III. INGENIERÍA — Semanas 7 a 9** |  | 21d | 2026-09-28 | 2026-10-18 |  | 0d |  | 216h |
| 47 | 3.1 | **SEMANA 07 — Instrumentación e ingeniería de detalle** |  | 7d | 2026-09-28 | 2026-10-04 |  | 0d |  | 56h |
| 48 | 3.1.1 | Actualizar solución eléctrica y especificaciones de instrumentos |  | 2d | 2026-09-28 | 2026-09-29 | 45 | 0d | GM [50%]; LC [50%] | 16h |
| 49 | 3.1.2 | Definir TAG-01 y lista I/O con canales y tipos de señal |  | 2d | 2026-09-30 | 2026-10-01 | 48 | 0d | LC [50%] | 8h |
| 50 | 3.1.3 | Desarrollar DWG-01: potencia, control, bornes y seguridad |  | 2d | 2026-10-02 | 2026-10-03 | 49 | 0d | LC [50%] | 8h |
| 51 | 3.1.4 | Preparar hojas de datos, registro de planos y revisiones |  | 4d | 2026-09-30 | 2026-10-03 | 48 | 0d | SR [50%] | 16h |
| 52 | 3.1.5 | Revisar coherencia SRS–TAG–I/O–DWG–BOM |  | 1d | 2026-10-04 | 2026-10-04 | 50, 51 | 0d | GM [50%]; RP [50%] | 8h |
| 53 | 3.1.6 | HITO S07 — Entregables semanales revisados | milestone | 0d | 2026-10-04 | 2026-10-04 | 52 | 0d | RP [50%] |  |
| 54 | 3.2 | **SEMANA 08 — Adquisiciones, planos y preparación de construcción** |  | 7d | 2026-10-05 | 2026-10-11 |  | 0d |  | 100h |
| 55 | 3.2.1 | Cerrar cotizaciones y emitir lista de adquisiciones |  | 2d | 2026-10-05 | 2026-10-06 | 53 | 0d | SR [50%] | 8h |
| 56 | 3.2.2 | Gestionar compra, recepción y verificación de componentes |  | 5d | 2026-10-07 | 2026-10-11 | 55 | 0d | SR [50%] | 20h |
| 57 | 3.2.3 | Detallar cámara, soportes, aislamiento y conductos de aire |  | 3d | 2026-10-05 | 2026-10-07 | 53 | 0d | LC [50%] | 12h |
| 58 | 3.2.4 | Preparar piezas y construir estructura mecánica preliminar |  | 4d | 2026-10-08 | 2026-10-11 | 57 | 0d | LC [50%]; RP [50%] | 32h |
| 59 | 3.2.5 | Actualizar SRS, trazabilidad y pendientes de integración |  | 7d | 2026-10-05 | 2026-10-11 | 53 | 0d | GM [50%] | 28h |
| 60 | 3.2.6 | HITO S08 — Entregables semanales revisados | milestone | 0d | 2026-10-11 | 2026-10-11 | 56, 58, 59 | 0d | RP [50%] |  |

Notes:
- 32: Responsable principal: Gonzalo Mamani (Systems / Requirements). Entregable: Definir estados, permisos, alarmas y filosofía de control. Duración y dedicación estimadas; validar con el equipo.
- 33: Responsable principal: Luis Chura (Automation Engineering). Entregable: Elaborar PFD actual y PFD del horno eléctrico requerido. Duración y dedicación estimadas; validar con el equipo.
- 34: Responsable principal: Luis Chura (Automation Engineering). Entregable: Elaborar P&ID y hoja cero de simbología. Duración y dedicación estimadas; validar con el equipo.
- 35: Responsable principal: Rafhael Pacco (Integration / Review). Entregable: Revisar interfaces y seguridad independiente del PID. Duración y dedicación estimadas; validar con el equipo.
- 36: Responsable principal: Sandro Romero (Document Control). Entregable: Consolidar memoria del diseño y referencias. Duración y dedicación estimadas; validar con el equipo.
- 37: Hito de planificación; aprobación real pendiente de registrar.
- 39: Responsable principal: Luis Chura (Automation Engineering). Entregable: Dimensionar preliminarmente calefacción, aislamiento y ventiladores. Duración y dedicación estimadas; validar con el equipo.
- 40: Responsable principal: Luis Chura (Automation Engineering). Entregable: Seleccionar PLC, HMI, PT100, transmisor y módulo AI 420 mA. Duración y dedicación estimadas; validar con el equipo.
- 41: Responsable principal: Luis Chura (Automation Engineering). Entregable: Seleccionar SSR, disipador y protecciones de calefacción. Duración y dedicación estimadas; validar con el equipo.
- 42: Responsable principal: Sandro Romero (Document Control). Entregable: Consolidar BOM, proveedores, presupuesto e IGV. Duración y dedicación estimadas; validar con el equipo.
- 43: Responsable principal: Gonzalo Mamani (Systems / Requirements). Entregable: Completar matriz de trazabilidad del diseño. Duración y dedicación estimadas; validar con el equipo.
- 44: Responsable principal: Rafhael Pacco (Integration / Review). Entregable: Revisar viabilidad y liberar Project Design Package v1.0. Duración y dedicación estimadas; validar con el equipo.
- 45: Hito de planificación; aprobación real pendiente de registrar.
- 48: Responsable principal: Gonzalo Mamani (Systems / Requirements). Entregable: Actualizar solución eléctrica y especificaciones de instrumentos. Duración y dedicación estimadas; validar con el equipo.
- 49: Responsable principal: Luis Chura (Automation Engineering). Entregable: Definir TAG-01 y lista I/O con canales y tipos de señal. Duración y dedicación estimadas; validar con el equipo.
- 50: Responsable principal: Luis Chura (Automation Engineering). Entregable: Desarrollar DWG-01: potencia, control, bornes y seguridad. Duración y dedicación estimadas; validar con el equipo.
- 51: Responsable principal: Sandro Romero (Document Control). Entregable: Preparar hojas de datos, registro de planos y revisiones. Duración y dedicación estimadas; validar con el equipo.
- 52: Responsable principal: Gonzalo Mamani (Systems / Requirements). Entregable: Revisar coherencia SRSTAGI/ODWGBOM. Duración y dedicación estimadas; validar con el equipo.
- 53: Hito de planificación; aprobación real pendiente de registrar.
- 55: Responsable principal: Sandro Romero (Document Control). Entregable: Cerrar cotizaciones y emitir lista de adquisiciones. Duración y dedicación estimadas; validar con el equipo.
- 56: Responsable principal: Sandro Romero (Document Control). Entregable: Gestionar compra, recepción y verificación de componentes. Duración y dedicación estimadas; validar con el equipo.
- 57: Responsable principal: Luis Chura (Automation Engineering). Entregable: Detallar cámara, soportes, aislamiento y conductos de aire. Duración y dedicación estimadas; validar con el equipo.
- 58: Responsable principal: Luis Chura (Automation Engineering). Entregable: Preparar piezas y construir estructura mecánica preliminar. Duración y dedicación estimadas; validar con el equipo.
- 59: Responsable principal: Gonzalo Mamani (Systems / Requirements). Entregable: Actualizar SRS, trazabilidad y pendientes de integración. Duración y dedicación estimadas; validar con el equipo.
- 60: Hito de planificación; aprobación real pendiente de registrar.

| ID | WBS | Task | Type | Duration | Start | Finish | Predecessors | Total slack | Resources | Work |
| --- | --- | --- | --- | --- | --- | --- | --- | --- | --- | --- |
| 61 | 3.3 | **SEMANA 09 — Riesgos, plan de pruebas y revisión final** |  | 7d | 2026-10-12 | 2026-10-18 |  | 0d |  | 60h |
| 62 | 3.3.1 | Realizar análisis de riesgos HAZOP del horno |  | 2d | 2026-10-12 | 2026-10-13 | 60 | 0d | GM [50%]; RP [50%] | 16h |
| 63 | 3.3.2 | Cerrar medidas: corte térmico, parada, ventilación y protección eléctrica |  | 2d | 2026-10-14 | 2026-10-15 | 62 | 0d | LC [50%]; RP [50%] | 16h |
| 64 | 3.3.3 | Preparar plan de pruebas y criterios de aceptación |  | 2d | 2026-10-14 | 2026-10-15 | 62 | 0d | GM [50%] | 8h |
| 65 | 3.3.4 | Preparar configuración PLC/HMI y estructura del programa |  | 2d | 2026-10-16 | 2026-10-17 | 63 | 0d | LC [50%] | 8h |
| 66 | 3.3.5 | Actualizar documentación, BOM y lista de acciones |  | 2d | 2026-10-16 | 2026-10-17 | 63, 64 | 0d | SR [50%] | 8h |
| 67 | 3.3.6 | Revisión técnica de preparación para implementar |  | 1d | 2026-10-18 | 2026-10-18 | 65, 66 | 0d | RP [50%] | 4h |
| 68 | 3.3.7 | HITO S09 — Entregables semanales revisados | milestone | 0d | 2026-10-18 | 2026-10-18 | 67 | 0d | RP [50%] |  |
| 69 | 4 | **IV. IMPLEMENTAR Y VALIDAR — Semanas 10 a 12** |  | 21d | 2026-10-19 | 2026-11-08 |  | 0d |  | 296h |
| 70 | 4.1 | **SEMANA 10 — Implementación y programación** |  | 7d | 2026-10-19 | 2026-10-25 |  | 0d |  | 108h |
| 71 | 4.1.1 | Montar calefactores, PT100, recirculación y extracción |  | 3d | 2026-10-19 | 2026-10-21 | 68 | 0d | LC [50%]; RP [50%] | 24h |
| 72 | 4.1.2 | Montar tablero, protecciones, SSR y cableado de campo |  | 3d | 2026-10-22 | 2026-10-24 | 71 | 0d | LC [50%]; RP [50%] | 24h |
| 73 | 4.1.3 | Programar secuencia, PID con salida 4–20 mA y alarmas en PLC |  | 4d | 2026-10-19 | 2026-10-22 | 68 | 0d | GM [50%] | 16h |
| 74 | 4.1.4 | Configurar HMI: consigna, tiempo, estados y tendencias |  | 2d | 2026-10-23 | 2026-10-24 | 73 | 0d | GM [50%] | 8h |
| 75 | 4.1.5 | Registrar montaje y preparar manual preliminar |  | 6d | 2026-10-19 | 2026-10-24 | 68 | 0d | SR [50%] | 24h |
| 76 | 4.1.6 | Inspeccionar montaje y autorizar pruebas de integración |  | 1d | 2026-10-25 | 2026-10-25 | 72, 74, 75 | 0d | GM [50%]; LC [50%]; RP [50%] | 12h |
| 77 | 4.1.7 | HITO S10 — Entregables semanales revisados | milestone | 0d | 2026-10-25 | 2026-10-25 | 76 | 0d | RP [50%] |  |
| 78 | 4.2 | **SEMANA 11 — Integración y puesta en marcha** |  | 7d | 2026-10-26 | 2026-11-01 |  | 0d |  | 76h |
| 79 | 4.2.1 | Verificar cableado, aislamiento, protección y continuidad PE |  | 1d | 2026-10-26 | 2026-10-26 | 77 | 0d | LC [50%]; RP [50%] | 8h |
| 80 | 4.2.2 | Comprobar lazo PT100–TT–AI y escalamiento 4–20 mA |  | 1d | 2026-10-27 | 2026-10-27 | 79 | 0d | LC [50%]; RP [50%] | 8h |
| 81 | 4.2.3 | Integrar PLC–HMI–SSR y verificar sentido de ventiladores |  | 1d | 2026-10-28 | 2026-10-28 | 80 | 0d | LC [50%]; RP [50%] | 8h |
| 82 | 4.2.4 | Verificar emergencia, limitador independiente y alarmas |  | 1d | 2026-10-29 | 2026-10-29 | 81 | 0d | GM [50%]; RP [50%] | 8h |
| 83 | 4.2.5 | Sintonizar PID y verificar extracción con histéresis |  | 2d | 2026-10-30 | 2026-10-31 | 82 | 0d | GM [50%]; LC [50%] | 16h |
| 84 | 4.2.6 | Consolidar plano conforme a montaje y resultados de integración |  | 6d | 2026-10-26 | 2026-10-31 | 77 | 0d | SR [50%] | 24h |
| 85 | 4.2.7 | Revisar funcionamiento integral y liberar validación |  | 1d | 2026-11-01 | 2026-11-01 | 83, 84 | 0d | RP [50%] | 4h |
| 86 | 4.2.8 | HITO S11 — Entregables semanales revisados | milestone | 0d | 2026-11-01 | 2026-11-01 | 85 | 0d | RP [50%] |  |

Notes:
- 62: Responsable principal: Gonzalo Mamani (Systems / Requirements). Entregable: Realizar análisis de riesgos HAZOP del horno. Duración y dedicación estimadas; validar con el equipo.
- 63: Responsable principal: Luis Chura (Automation Engineering). Entregable: Cerrar medidas: corte térmico, parada, ventilación y protección eléctrica. Duración y dedicación estimadas; validar con el equipo.
- 64: Responsable principal: Gonzalo Mamani (Systems / Requirements). Entregable: Preparar plan de pruebas y criterios de aceptación. Duración y dedicación estimadas; validar con el equipo.
- 65: Responsable principal: Luis Chura (Automation Engineering). Entregable: Preparar configuración PLC/HMI y estructura del programa. Duración y dedicación estimadas; validar con el equipo.
- 66: Responsable principal: Sandro Romero (Document Control). Entregable: Actualizar documentación, BOM y lista de acciones. Duración y dedicación estimadas; validar con el equipo.
- 67: Responsable principal: Rafhael Pacco (Integration / Review). Entregable: Revisión técnica de preparación para implementar. Duración y dedicación estimadas; validar con el equipo.
- 68: Hito de planificación; aprobación real pendiente de registrar.
- 71: Responsable principal: Luis Chura (Automation Engineering). Entregable: Montar calefactores, PT100, recirculación y extracción. Duración y dedicación estimadas; validar con el equipo.
- 72: Responsable principal: Luis Chura (Automation Engineering). Entregable: Montar tablero, protecciones, SSR y cableado de campo. Duración y dedicación estimadas; validar con el equipo.
- 73: Programación del PID y mando analógico 420 mA al regulador SSR-01; sustituye la referencia anterior a control proporcional por tiempo. Responsable: Automation Engineering.
- 74: Responsable principal: Gonzalo Mamani (Systems / Requirements). Entregable: Configurar HMI: consigna, tiempo, estados y tendencias. Duración y dedicación estimadas; validar con el equipo.
- 75: Responsable principal: Sandro Romero (Document Control). Entregable: Registrar montaje y preparar manual preliminar. Duración y dedicación estimadas; validar con el equipo.
- 76: Responsable principal: Gonzalo Mamani (Systems / Requirements). Entregable: Inspeccionar montaje y autorizar pruebas de integración. Duración y dedicación estimadas; validar con el equipo.
- 77: Hito de planificación; aprobación real pendiente de registrar.
- 79: Responsable principal: Luis Chura (Automation Engineering). Entregable: Verificar cableado, aislamiento, protección y continuidad PE. Duración y dedicación estimadas; validar con el equipo.
- 80: Responsable principal: Luis Chura (Automation Engineering). Entregable: Comprobar lazo PT100TTAI y escalamiento 420 mA. Duración y dedicación estimadas; validar con el equipo.
- 81: Responsable principal: Luis Chura (Automation Engineering). Entregable: Integrar PLCHMISSR y verificar sentido de ventiladores. Duración y dedicación estimadas; validar con el equipo.
- 82: Responsable principal: Gonzalo Mamani (Systems / Requirements). Entregable: Verificar emergencia, limitador independiente y alarmas. Duración y dedicación estimadas; validar con el equipo.
- 83: Responsable principal: Gonzalo Mamani (Systems / Requirements). Entregable: Sintonizar PID y verificar extracción con histéresis. Duración y dedicación estimadas; validar con el equipo.
- 84: Responsable principal: Sandro Romero (Document Control). Entregable: Consolidar plano conforme a montaje y resultados de integración. Duración y dedicación estimadas; validar con el equipo.
- 85: Responsable principal: Rafhael Pacco (Integration / Review). Entregable: Revisar funcionamiento integral y liberar validación. Duración y dedicación estimadas; validar con el equipo.
- 86: Hito de planificación; aprobación real pendiente de registrar.

| ID | WBS | Task | Type | Duration | Start | Finish | Predecessors | Total slack | Resources | Work |
| --- | --- | --- | --- | --- | --- | --- | --- | --- | --- | --- |
| 87 | 4.3 | **SEMANA 12 — Pruebas preliminares y demostración funcional** |  | 7d | 2026-11-02 | 2026-11-08 |  | 0d |  | 112h |
| 88 | 4.3.1 | Evaluar respuesta térmica preliminar y temporización del ciclo |  | 2d | 2026-11-02 | 2026-11-03 | 86 | 0d | GM [50%]; LC [50%]; RP [50%] | 24h |
| 89 | 4.3.2 | Corregir desviaciones y repetir pruebas afectadas |  | 2d | 2026-11-04 | 2026-11-05 | 88 | 0d | GM [50%]; LC [50%]; RP [50%] | 24h |
| 90 | 4.3.3 | Consolidar borrador de informe, manual y mantenimiento |  | 4d | 2026-11-02 | 2026-11-05 | 86 | 0d | SR [50%] | 16h |
| 91 | 4.3.4 | Capacitar equipo y ensayar demostración del prototipo |  | 1d | 2026-11-06 | 2026-11-06 | 89, 90 | 0d | SR [50%]; GM [50%]; LC [50%]; RP [50%] | 16h |
| 92 | 4.3.5 | Reserva para contingencias y comprobación final |  | 1d | 2026-11-07 | 2026-11-07 | 91 | 0d | SR [50%]; GM [50%]; LC [50%]; RP [50%] | 16h |
| 93 | 4.3.6 | Presentar y demostrar el horno eléctrico funcionando |  | 1d | 2026-11-08 | 2026-11-08 | 92 | 0d | SR [50%]; GM [50%]; LC [50%]; RP [50%] | 16h |
| 94 | 4.3.7 | HITO S12 — Demostración funcional; inicio de verificación formal | milestone | 0d | 2026-11-08 | 2026-11-08 | 93 | 0d | RP [50%] |  |
| 95 | 5 | **V. VERIFICAR, COMISIONAR Y CERRAR — Semanas 13 a 16** |  | 28d | 2026-11-09 | 2026-12-06 |  | 0d |  | 272h |
| 96 | 5.1 | **SEMANA 13 — Verificación formal y precomisionamiento** |  | 7d | 2026-11-09 | 2026-11-15 |  | 0d |  | 56h |
| 97 | 5.1.1 | Revisar observaciones S12 y aprobar protocolos de aceptación |  | 1d | 2026-11-09 | 2026-11-09 | 94 | 0d | GM [50%]; RP [50%] | 8h |
| 98 | 5.1.2 | Inspeccionar instalación eléctrica y autorización de energización |  | 1d | 2026-11-10 | 2026-11-10 | 97 | 0d | LC [50%]; RP [50%] | 8h |
| 99 | 5.1.3 | Verificar PT100, transmisor y escalamiento 0–150 °C |  | 1d | 2026-11-11 | 2026-11-11 | 98 | 0d | LC [50%]; GM [50%] | 8h |
| 100 | 5.1.4 | Ejecutar I/O Check, Loop Check y comunicación PLC–HMI |  | 1d | 2026-11-12 | 2026-11-12 | 99 | 0d | LC [50%]; RP [50%] | 8h |
| 101 | 5.1.5 | Probar parada, limitador, enclavamientos y recuperación de fallas |  | 1d | 2026-11-13 | 2026-11-13 | 100 | 0d | RP [50%]; LC [50%] | 8h |
| 102 | 5.1.6 | Corregir hallazgos y repetir verificaciones afectadas |  | 1d | 2026-11-14 | 2026-11-14 | 101 | 0d | LC [50%]; RP [50%] | 8h |
| 103 | 5.1.7 | Revisar dossier de precomisionamiento y liberar ensayos térmicos |  | 1d | 2026-11-15 | 2026-11-15 | 102 | 0d | RP [50%]; SR [50%] | 8h |
| 104 | 5.1.8 | HITO S13 — Precomisionamiento aceptado | milestone | 0d | 2026-11-15 | 2026-11-15 | 103 | 0d | RP [50%] |  |
| 105 | 5.2 | **SEMANA 14 — Ensayos térmicos y aceptación FAT** |  | 7d | 2026-11-16 | 2026-11-22 |  | 0d |  | 56h |
| 106 | 5.2.1 | Ensayar calentamiento en vacío y ajustar PID |  | 2d | 2026-11-16 | 2026-11-17 | 104 | 0d | LC [50%]; RP [50%] | 16h |
| 107 | 5.2.2 | Ensayar con carga representativa y medir distribución térmica |  | 2d | 2026-11-18 | 2026-11-19 | 106 | 0d | LC [50%]; GM [50%] | 16h |
| 108 | 5.2.3 | Evaluar repetibilidad, temporización y criterios del SRS |  | 1d | 2026-11-20 | 2026-11-20 | 107 | 0d | GM [50%]; RP [50%] | 8h |
| 109 | 5.2.4 | Corregir desviaciones térmicas y repetir ensayos |  | 1d | 2026-11-21 | 2026-11-21 | 108 | 0d | LC [50%]; RP [50%] | 8h |
| 110 | 5.2.5 | Ejecutar FAT del prototipo y emitir acta de aceptación |  | 1d | 2026-11-22 | 2026-11-22 | 109 | 0d | RP [50%]; GM [50%] | 8h |
| 111 | 5.2.6 | HITO S14 — FAT aceptado y liberación a comisionamiento | milestone | 0d | 2026-11-22 | 2026-11-22 | 110 | 0d | RP [50%] |  |

Notes:
- 88: Pruebas preliminares del prototipo; la aceptación formal del desempeño se programa en S14S15. No demuestra por sí sola el curado del barniz.
- 89: Responsable principal: Gonzalo Mamani (Systems / Requirements). Entregable: Corregir desviaciones y repetir pruebas afectadas. Duración y dedicación estimadas; validar con el equipo.
- 90: Versión preliminar para demostración S12; cierre documental y entrega definitiva S16.
- 91: Responsable principal: Sandro Romero (Document Control). Entregable: Capacitar equipo y ensayar demostración del prototipo. Duración y dedicación estimadas; validar con el equipo.
- 92: Responsable principal: Sandro Romero (Document Control). Entregable: Reserva para contingencias y comprobación final. Duración y dedicación estimadas; validar con el equipo.
- 93: Responsable principal: Sandro Romero (Document Control). Entregable: Presentar y demostrar el horno eléctrico funcionando. Duración y dedicación estimadas; validar con el equipo.
- 94: Hito de planificación; aprobación real pendiente de registrar.
- 95: Continuación de la demostración S12. FAT/SAT adaptados al prototipo académico; no implica instalación en la empresa. Los hitos requieren evidencias y aprobación real.
- 97: Responsable principal: Gonzalo Mamani (Systems / Requirements). Entregable: protocolos, tolerancias y criterios de aceptación vinculados al SRS.
- 98: Responsable principal: Luis Chura (Automation Engineering). Registro de inspección, protecciones, continuidad PE y condiciones seguras; suspender pruebas ante no conformidades críticas.
- 99: Responsable principal: Luis Chura (Automation Engineering). Contraste con referencia disponible y verificación de 420 mA; registrar incertidumbre y ajustes. No denominar calibración certificada sin evidencia.
- 100: Responsable principal: Luis Chura (Automation Engineering). Verificar mando analógico 420 mA a SSR, relés de ventiladores, señalización y comunicación; entregar listas firmadas.
- 101: Responsable principal: Rafhael Pacco (Integration / Review). Protocolo de corte independiente, ausencia de reinicio automático, fallas de sensor y comunicación; simulaciones controladas.
- 102: Responsable principal: Luis Chura (Automation Engineering). Entregable: registro de hallazgos cerrados y evidencias de repetición.
- 103: Responsable principal: Rafhael Pacco (Integration / Review). Liberación condicionada al cierre de observaciones críticas; reagendar si no cumple.
- 104: Responsable principal: Rafhael Pacco (Integration / Review).
- 106: Responsable principal: Luis Chura (Automation Engineering). Registrar curvas, sobreimpulso, estabilización y error respecto de consigna.
- 107: Responsable principal: Luis Chura (Automation Engineering). Usar mediciones en varios puntos y referencia temporal; una PT100 fija no prueba uniformidad. Barniz real solo con ficha, ventilación y autorización compatibles; de otro modo carga inerte.
- 108: Responsable principal: Gonzalo Mamani (Systems / Requirements). Matriz de resultados y criterios cumple/no cumple; no atribuir calidad del curado a temperatura del aire solamente.
- 109: Responsable principal: Luis Chura (Automation Engineering). Registrar parámetros finales y ensayos repetidos; duración estimada, ampliar si persisten desviaciones.
- 110: Responsable principal: Rafhael Pacco (Integration / Review). FAT en taller/laboratorio: secuencia, HMI, desempeño y seguridad según protocolos; no es certificación industrial.
- 111: Responsable principal: Rafhael Pacco (Integration / Review).

| ID | WBS | Task | Type | Duration | Start | Finish | Predecessors | Total slack | Resources | Work |
| --- | --- | --- | --- | --- | --- | --- | --- | --- | --- | --- |
| 112 | 5.3 | **SEMANA 15 — Comisionamiento, SAT académico y validación** |  | 7d | 2026-11-23 | 2026-11-29 |  | 0d |  | 72h |
| 113 | 5.3.1 | Revisar condiciones del entorno de demostración y ejecutar SAT |  | 1d | 2026-11-23 | 2026-11-23 | 111 | 0d | RP [50%]; LC [50%] | 8h |
| 114 | 5.3.2 | Realizar puesta en marcha supervisada y ciclos completos |  | 2d | 2026-11-24 | 2026-11-25 | 113 | 0d | LC [50%]; RP [50%] | 16h |
| 115 | 5.3.3 | Validar requisitos y analizar indicadores de desempeño |  | 1d | 2026-11-26 | 2026-11-26 | 114 | 0d | GM [50%]; RP [50%] | 8h |
| 116 | 5.3.4 | Cerrar incidencias y repetir pruebas de regresión |  | 2d | 2026-11-27 | 2026-11-28 | 115 | 0d | LC [50%]; RP [50%] | 16h |
| 117 | 5.3.5 | Consolidar evaluación técnica, económica y limitaciones |  | 2d | 2026-11-27 | 2026-11-28 | 115 | 0d | GM [50%]; SR [50%] | 16h |
| 118 | 5.3.6 | Revisar validación final y autorizar entrega técnica |  | 1d | 2026-11-29 | 2026-11-29 | 116, 117 | 0d | RP [50%]; GM [50%] | 8h |
| 119 | 5.3.7 | HITO S15 — Comisionamiento y validación aceptados | milestone | 0d | 2026-11-29 | 2026-11-29 | 118 | 0d | RP [50%] |  |
| 120 | 5.4 | **SEMANA 16 — Documentación final, capacitación y cierre** |  | 7d | 2026-11-30 | 2026-12-06 |  | 0d |  | 88h |
| 121 | 5.4.1 | Actualizar planos As-Built, TAG, I/O, BOM y respaldos PLC/HMI |  | 2d | 2026-11-30 | 2026-12-01 | 119 | 0d | LC [50%]; SR [50%] | 16h |
| 122 | 5.4.2 | Finalizar manuales de operación, fallas y mantenimiento |  | 2d | 2026-11-30 | 2026-12-01 | 119 | 0d | GM [50%]; RP [50%] | 16h |
| 123 | 5.4.3 | Consolidar informe, anexos, resultados y conclusiones |  | 1d | 2026-12-02 | 2026-12-02 | 121, 122 | 0d | SR [50%]; GM [50%] | 8h |
| 124 | 5.4.4 | Capacitar operadores y demostrar manejo del prototipo |  | 1d | 2026-12-02 | 2026-12-02 | 121, 122 | 0d | RP [50%]; LC [50%] | 8h |
| 125 | 5.4.5 | Revisión cruzada del expediente y ensayo de sustentación |  | 1d | 2026-12-03 | 2026-12-03 | 123, 124 | 0d | SR [50%]; RP [50%] | 8h |
| 126 | 5.4.6 | Reserva para correcciones finales y verificación de entrega |  | 1d | 2026-12-04 | 2026-12-04 | 125 | 0d | SR [50%]; LC [50%] | 8h |
| 127 | 5.4.7 | Presentar proyecto, entregar expediente y formalizar cierre |  | 1d | 2026-12-05 | 2026-12-05 | 126 | 0d | SR [50%]; GM [50%]; LC [50%]; RP [50%] | 16h |
| 128 | 5.4.8 | Registrar acta de cierre y lecciones aprendidas |  | 1d | 2026-12-06 | 2026-12-06 | 127 | 0d | SR [50%]; RP [50%] | 8h |
| 129 | 5.4.9 | HITO S16 — Proyecto entregado y cerrado | milestone | 0d | 2026-12-06 | 2026-12-06 | 128 | 0d | RP [50%] |  |

Notes:
- 113: Responsable principal: Rafhael Pacco (Integration / Review). SAT adaptado al entorno académico previsto: alimentación, ubicación, ventilación e interfaces; no presupone traslado a la empresa.
- 114: Responsable principal: Luis Chura (Automation Engineering). Evidencias de arranque, calentamiento, mantenimiento térmico, enfriamiento y parada.
- 115: Responsable principal: Gonzalo Mamani (Systems / Requirements). Verificación requisitopruebaresultado; comparación con proceso actual solo donde existan datos comparables.
- 116: Responsable principal: Luis Chura (Automation Engineering). Acta de incidencias y pruebas afectadas, sin pendientes críticos para entrega.
- 117: Responsable principal: Gonzalo Mamani (Systems / Requirements). Costos reales documentados y resultados; distinguir estimaciones y beneficios no medidos.
- 118: Responsable principal: Rafhael Pacco (Integration / Review). Aceptación formal académica sustentada en pruebas y alcance aprobado.
- 119: Responsable principal: Rafhael Pacco (Integration / Review).
- 121: Responsable principal: Luis Chura (Automation Engineering). Entregar planos conforme a montaje y versiones de programas recuperables.
- 122: Responsable principal: Gonzalo Mamani (Systems / Requirements). Procedimientos de arranque, parada, recuperación y mantenimiento preventivo/correctivo.
- 123: Responsable principal: Sandro Romero (Document Control). Entregable: informe final coherente con evidencias, referencias y registro de revisiones.
- 124: Responsable principal: Rafhael Pacco (Integration / Review). Registro de capacitación práctica y verificación de comprensión.
- 125: Responsable principal: Sandro Romero (Document Control). Lista de revisión, trazabilidad final y preparación de presentación.
- 126: Responsable principal: Sandro Romero (Document Control). Reserva explícita; repetir pruebas si alguna corrección afecta al funcionamiento.
- 127: Responsable principal: Sandro Romero (Document Control). Presentación final propuesta 05/12/2026; confirmar con docente. Entregar prototipo, informe y archivos.
- 128: Responsable principal: Sandro Romero (Document Control). Acta y archivo final; cierre planificado 06/12/2026.
- 129: Responsable principal: Rafhael Pacco (Integration / Review).
